# TFG

Schedule from MS Project, 2024-03-25 to 2024-06-28, costs in €.
Microsoft

## Calendars

- Estándar: Mon-Fri 08:45-14:15, 16:00-18:00; Sat-Sun off.

## Resources

| Resource | Rate |
| --- | --- |
| Investigador | 15 |
| Desarrollador | 30 |
| Administrador | 25 |
| Tester | 40 |
| Analista | 35 |

## Schedule

| ID | WBS | Task | Duration | Start | Finish | Predecessors | Total slack | Constraint | Resources | Work | Cost |
| --- | --- | --- | --- | --- | --- | --- | --- | --- | --- | --- | --- |
| 1 | 1 | Especificar el proyecto | 3d | 2024-03-25 | 2024-04-01 |  | 0d | start no earlier than 2024-03-25 | Analista | 24h | 840 |
| 2 | 2 | Estudiar alternativas | 1w | 2024-04-23 | 2024-05-06 | 4 | 0d |  | Analista | 40h | 1,400 |
| 3 | 3 | Diseñar el sistema | 5d | 2024-05-07 | 2024-05-15 | 2 | 0d |  | Analista | 40h | 1,400 |
| 4 | 4 | Documentar inicialmente la memoria | 1.5w | 2024-04-02 | 2024-04-22 | 1 | 0d |  | Investigador | 60h | 900 |
| 5 | 5 | **Desarrollar el producto software** | 27.5d | 2024-05-15 | 2024-06-25 | 3 | 0d |  |  | 220h | 6,700 |
| 6 | 5.1 | Base del producto (máquinas, código inicial) | 1.5w | 2024-05-15 | 2024-05-27 |  | 0d |  | Desarrollador | 60h | 1,800 |
| 7 | 5.2 | Conexión con base de datos interna | 0.25w | 2024-05-27 | 2024-05-28 | 6 | 0d |  | Desarrollador | 10h | 300 |
| 8 | 5.3 | Conexión con API interna | 0.25w | 2024-05-28 | 2024-05-29 | 7FS-2.5% | 0d |  | Desarrollador | 10h | 300 |
| 9 | 5.4 | Conexión con base de datos externa | 0.5w | 2024-05-29 | 2024-06-03 | 8 | 0d |  | Desarrollador | 20h | 600 |
| 10 | 5.5 | Conexión mediante scraping | 0.5w | 2024-06-03 | 2024-06-06 | 9FS-2.5% | 0d |  | Desarrollador | 20h | 600 |
| 11 | 5.6 | Procesamiento de datos | 0.75w | 2024-06-06 | 2024-06-12 | 10 | 0d |  | Desarrollador | 30h | 900 |
| 12 | 5.7 | Visualización de datos | 0.75w | 2024-06-12 | 2024-06-18 | 11 | 0d |  | Desarrollador | 30h | 900 |
| 13 | 5.8 | Testing | 0.5w | 2024-06-18 | 2024-06-20 | 12 | 0d |  | Tester | 20h | 800 |
| 14 | 5.9 | Despliegue | 0.5w | 2024-06-20 | 2024-06-25 | 13 | 0d |  | Administrador | 20h | 500 |
| 15 | 6 | Documentar finalmente la memoria | 3d | 2024-06-25 | 2024-06-28 | 5 | 0d |  | Investigador | 24h | 360 |
